# Карта города

How a schedule from MS Project changed from version to version. A marks actual dates.

## Version 1 (saved 2026-03-02)

Note of the change: Добавил вторую лабу

| ID | WBS | Task | Duration | Start | Finish | Predecessors | Total float |
| --- | --- | --- | --- | --- | --- | --- | --- |
| 1 |  | Начало проекта | 0d | 2026-03-02 | 2026-03-02 |  | 70d |
| 2 | 2 | **Создание интерфейса** | 110d | 2026-03-02 | 2026-08-07 | 1 | 0d |
| 3 | 2.1 | **Разработка дизайна интерфейса** | 25d | 2026-03-02 | 2026-04-06 |  | 70d |
| 4 |  | Разработка 2D графических элементов | 3w | 2026-03-02 | 2026-03-23 |  | 70d |
| 5 |  | Разработка 3D графических элементов | 2w | 2026-03-02 | 2026-03-16 | 4SS | 70d |
| 6 |  | Создание заставки | 3w | 2026-03-17 | 2026-04-06 | 5 | 70d |
| 7 |  | Программирование интерфейса | 3w | 2026-07-17 | 2026-08-07 | 3, 12 | 0d |
| 8 | 3 | **Построение базы объектов** | 85d | 2026-03-02 | 2026-07-03 |  | 53d |
| 9 |  | Анализ и построение структуры базы объектов | 2w | 2026-03-02 | 2026-03-16 |  | 53d |
| 10 |  | Программирование средств обработки базы объектов | 3w | 2026-03-17 | 2026-04-06 | 9 | 53d |
| 11 |  | Наполнение базы объектов | 12w | 2026-04-07 | 2026-07-03 | 10 | 53d |
| 12 | 4 | **Создание ядра GIS** | 95d | 2026-03-02 | 2026-07-17 |  | 0d |
| 13 |  | Анализ и проектирование ядра | 3w | 2026-03-02 | 2026-03-23 |  | 0d |
| 14 |  | Создание модели ядра | 5w | 2026-03-24 | 2026-04-27 | 13 | 0d |
| 15 |  | Тестирование модели ядра | 1w | 2026-04-28 | 2026-05-05 | 14 | 0d |
| 16 |  | Создание рабочей версии ядра | 10w | 2026-05-06 | 2026-07-17 | 15 | 0d |
| 17 |  | Создание мультимедиа - наполнения | 6w | 2026-04-07 | 2026-05-21 | 3 | 83d |
| 18 |  | Создание справочной системы | 2w | 2026-08-07 | 2026-08-21 | 7 | 18d |
| 19 | 7 | **Создание руководства пользователя** | 17d | 2026-07-24 | 2026-08-18 | 7FS-10d | 0d |
| 20 |  | Разработка дизайна руководства | 1w | 2026-07-24 | 2026-07-31 |  | 0d |
| 21 |  | Написание руководства пользователя | 3w | 2026-07-28 | 2026-08-18 | 20SS+2d | 0d |
| 22 | 8 | **Создание web - сайта и поддержка** | 21d | 2026-07-28 | 2026-08-26 |  | 0d |
| 23 |  | Разработка структуры сайта | 1d | 2026-07-28 | 2026-07-29 | 21SS | 0d |
| 24 |  | Разработка дизайна сайта | 1w | 2026-07-29 | 2026-08-05 | 23 | 0d |
| 25 |  | Наполнение сайта | 3w | 2026-08-05 | 2026-08-26 | 24 | 0d |
| 26 |  | Тестирование сайта | 4w | 2026-08-19 | 2026-09-16 | 22FS-1w | 0d |
| 27 |  | Сдача сайта в эксплуатацию | 0d | 2026-09-16 | 2026-09-16 | 26 | 0d |

## Version 2 (saved 2026-03-03)

Note of the change: Добавлена 3 лаба

Last finish stays 2026-09-16.

Changed:

| ID | Task | Finish |
| --- | --- | --- |
| 15 | Тестирование модели ядра | 2026-05-05 → 2026-05-06 (+1d) |
