# Карта города

How a schedule from MS Project changed from version to version. A marks actual dates.

## Version 1 (data date 2026-05-15, saved 2026-03-16)

Note of the change: Добавил 4 лабу

| ID | WBS | Task | Duration | Start | Finish | Predecessors | Complete | Total float | Constraint |
| --- | --- | --- | --- | --- | --- | --- | --- | --- | --- |
| 1 |  | Начало проекта | 0d | 2026-03-02 09:00 A | 2026-03-02 09:00 A |  | 100% |  |  |
| 2 | 2 | **Создание интерфейса** | 81.55d | 2026-03-02 09:00 A | 2026-06-29 17:23 | 1 | 85% | 0d |  |
| 3 | 2.1 | **Разработка дизайна интерфейса** | 38.38d | 2026-03-02 09:00 A | 2026-04-24 12:00 A |  | 100% |  |  |
| 4 |  | Разработка 2D графических элементов | 3.3w | 2026-03-02 09:00 A | 2026-03-25 17:00 A |  | 100% |  |  |
| 5 |  | Разработка 3D графических элементов | 2.2w | 2026-03-02 09:00 A | 2026-04-08 15:00 A | 4SS | 100% |  |  |
| 6 |  | Создание заставки | 3.3w | 2026-03-17 11:00 A | 2026-04-24 12:00 A | 5 | 100% |  |  |
| 7 |  | Программирование интерфейса | 1.5w | 2026-06-18 12:23 | 2026-06-29 17:23 | 3, 12 |  | 0d |  |
| 8 | 3 | **Построение базы объектов** | 80.25d | 2026-03-24 12:00 A | 2026-07-17 18:00 |  | 45% | 8.8d |  |
| 9 |  | Анализ и построение структуры базы объектов | 2w | 2026-03-24 12:00 A | 2026-04-07 15:00 A |  | 100% |  |  |
| 10 |  | Программирование средств обработки базы объектов | 2w | 2026-04-07 15:00 A | 2026-04-21 15:00 A | 9 | 100% |  |  |
| 11 |  | Наполнение базы объектов | 12w | 2026-04-21 15:00 A | 2026-07-17 18:00 | 10 | 27% | 8.8d |  |
| 12 | 4 | **Создание ядра GIS** | 74.05d | 2026-03-02 09:00 A | 2026-06-18 12:23 |  | 71% | 0d |  |
| 13 |  | Анализ и проектирование ядра | 3.73w | 2026-03-02 09:00 A | 2026-03-27 18:00 A |  | 100% |  |  |
| 14 |  | Создание модели ядра | 5.13w | 2026-03-24 12:00 A | 2026-04-29 09:00 | 13 | 99% | 0d |  |
| 15 |  | Тестирование модели ядра | 0.5w | 2026-04-29 09:00 A | 2026-05-04 15:00 A | 14 | 100% |  |  |
| 16 |  | Создание рабочей версии ядра | 6.11w | 2026-05-04 15:00 A | 2026-06-18 12:23 | 15 | 27% | 0d |  |
| 17 |  | Создание мультимедиа - наполнения | 6w | 2026-04-07 15:00 A | 2026-05-22 16:00 | 3 | 70% | 47.93d |  |
| 18 |  | Создание справочной системы | 2w | 2026-07-09 11:23 | 2026-07-23 14:23 | 7 |  | 5.26d |  |
| 19 | 7 | **Создание руководства пользователя** | 17.38d | 2026-06-15 17:23 | 2026-07-09 11:23 | 7FS-10d |  | 0d |  |
| 20 |  | Разработка дизайна руководства | 1w | 2026-06-15 17:23 | 2026-06-23 09:23 |  |  | 0d |  |
| 21 |  | Написание руководства пользователя | 3w | 2026-06-17 17:23 | 2026-07-09 11:23 | 20SS+2d |  | 0d |  |
| 22 | 8 | **Создание web - сайта и поддержка** | 23.62d | 2026-06-17 17:23 | 2026-07-21 14:23 |  |  | 0d |  |
| 23 |  | Разработка структуры сайта | 1d | 2026-06-17 17:23 | 2026-06-18 17:23 | 21SS |  | 0d |  |
| 24 |  | Разработка дизайна сайта | 1.43w | 2026-06-18 17:23 | 2026-06-30 10:23 | 23 |  | 0d |  |
| 25 |  | Наполнение сайта | 3w | 2026-06-30 10:23 | 2026-07-21 14:23 | 24 |  | 0d |  |
| 26 |  | Тестирование сайта | 2.45w | 2026-07-14 14:23 | 2026-07-30 16:26 | 22FS-1w |  | 0d |  |
| 27 |  | Сдача сайта в эксплуатацию | 0d | 2026-07-30 16:26 | 2026-07-30 16:26 | 26 |  | 0d |  |
| 28 | 11 | **Совещание** | 100.75d | 2026-03-04 09:00 A | 2026-07-29 10:00 |  | 50% | 1.68d |  |
| 29 |  | Совещание 1 | 1h | 2026-03-04 09:00 A | 2026-03-04 10:00 A |  | 100% |  | start no earlier than 2026-03-04 09:00 |
| 30 |  | Совещание 2 | 1h | 2026-03-11 09:00 A | 2026-03-11 10:00 A |  | 100% |  | start no earlier than 2026-03-11 09:00 |
| 31 |  | Совещание 3 | 1h | 2026-03-18 09:00 A | 2026-03-18 10:00 A |  | 100% |  | start no earlier than 2026-03-18 09:00 |
| 32 |  | Совещание 4 | 1h | 2026-03-25 09:00 A | 2026-03-25 10:00 A |  | 100% |  | start no earlier than 2026-03-25 09:00 |
| 33 |  | Совещание 5 | 1h | 2026-04-01 09:00 A | 2026-04-01 10:00 A |  | 100% |  | start no earlier than 2026-04-01 09:00 |
| 34 |  | Совещание 6 | 1h | 2026-04-08 09:00 A | 2026-04-08 10:00 A |  | 100% |  | start no earlier than 2026-04-08 09:00 |
| 35 |  | Совещание 7 | 1h | 2026-04-15 09:00 A | 2026-04-15 10:00 A |  | 100% |  | start no earlier than 2026-04-15 09:00 |
| 36 |  | Совещание 8 | 1h | 2026-04-22 09:00 A | 2026-04-22 10:00 A |  | 100% |  | start no earlier than 2026-04-22 09:00 |
| 37 |  | Совещание 9 | 1h | 2026-04-29 09:00 A | 2026-04-29 10:00 A |  | 100% |  | start no earlier than 2026-04-29 09:00 |
| 38 |  | Совещание 10 | 1h | 2026-05-06 09:00 A | 2026-05-06 10:00 A |  | 100% |  | start no earlier than 2026-05-06 09:00 |
| 39 |  | Совещание 11 | 1h | 2026-05-13 09:00 A | 2026-05-13 10:00 A |  | 100% |  | start no earlier than 2026-05-13 09:00 |
| 40 |  | Совещание 12 | 1h | 2026-05-20 09:00 | 2026-05-20 10:00 |  |  | 50.55d | start no earlier than 2026-05-20 09:00 |
| 41 |  | Совещание 13 | 1h | 2026-05-27 09:00 | 2026-05-27 10:00 |  |  | 45.55d | start no earlier than 2026-05-27 09:00 |
| 42 |  | Совещание 14 | 1h | 2026-06-03 09:00 | 2026-06-03 10:00 |  |  | 40.55d | start no earlier than 2026-06-03 09:00 |
| 43 |  | Совещание 15 | 1h | 2026-06-10 09:00 | 2026-06-10 10:00 |  |  | 35.55d | start no earlier than 2026-06-10 09:00 |
| 44 |  | Совещание 16 | 1h | 2026-06-17 09:00 | 2026-06-17 10:00 |  |  | 31.68d | start no earlier than 2026-06-17 09:00 |
| 45 |  | Совещание 17 | 1h | 2026-06-24 09:00 | 2026-06-24 10:00 |  |  | 26.68d | start no earlier than 2026-06-24 09:00 |
| 46 |  | Совещание 18 | 1h | 2026-07-01 09:00 | 2026-07-01 10:00 |  |  | 21.68d | start no earlier than 2026-07-01 09:00 |
| 47 |  | Совещание 19 | 1h | 2026-07-08 09:00 | 2026-07-08 10:00 |  |  | 16.68d | start no earlier than 2026-07-08 09:00 |
| 48 |  | Совещание 20 | 1h | 2026-07-15 09:00 | 2026-07-15 10:00 |  |  | 11.68d | start no earlier than 2026-07-15 09:00 |
| 49 |  | Совещание 21 | 1h | 2026-07-22 09:00 | 2026-07-22 10:00 |  |  | 6.68d | start no earlier than 2026-07-22 09:00 |
| 50 |  | Совещание 22 | 1h | 2026-07-29 09:00 | 2026-07-29 10:00 |  |  | 1.68d | start no earlier than 2026-07-29 09:00 |

## Version 2 (data date 2026-05-15, saved 2026-03-30)

Note of the change: 5 lab

Last finish 2026-07-30 → 2026-07-31 (+1d). Complete tasks 19 → 18.

Changed:

| ID | Task | Start | Finish | Duration | Complete | Total float | Other |
| --- | --- | --- | --- | --- | --- | --- | --- |
| 1 | Начало проекта |  |  |  |  |  | baseline start none → 2026-03-02 09:00; baseline finish none → 2026-03-02 09:00 |
| 2 | **Создание интерфейса** |  | 2026-06-29 17:23 → 2026-07-03 12:04 (+4d) | 81.55d → 85.01d | 85% → 88% |  | baseline start none → 2026-03-02 09:00; baseline finish none → 2026-06-29 17:23 |
| 3 | **Разработка дизайна интерфейса** |  | 2026-04-24 12:00 A → 2026-04-10 16:00 A (-14d) | 38.38d → 28.75d |  |  | baseline start none → 2026-03-02 09:00; baseline finish none → 2026-04-07 15:00 |
| 4 | Разработка 2D графических элементов |  | 2026-03-25 17:00 A → 2026-03-26 11:00 A (+1d) |  |  |  | resources Художник-дизайнер; Специальное ПО [0.6%] → Художник-дизайнер; Специализированное ПО [0.6%]; baseline start none → 2026-03-02 09:00; baseline finish none → 2026-03-24 12:00 |
| 5 | Разработка 3D графических элементов |  | 2026-04-08 15:00 A → 2026-03-18 13:00 A (-21d) |  |  |  | resources 3D аниматор; Специальное ПО [0.6%] → 3D аниматор; Специализированное ПО [0.6%]; baseline start none → 2026-03-02 09:00; baseline finish none → 2026-03-17 11:00 |
| 6 | Создание заставки | 2026-03-17 11:00 A → 2026-03-18 14:00 A (+1d) | 2026-04-24 12:00 A → 2026-04-10 16:00 A (-14d) |  |  |  | resources 3D аниматор; Специальное ПО [0.6%] → 3D аниматор; Специализированное ПО [0.6%]; baseline start none → 2026-03-17 11:00; baseline finish none → 2026-04-07 15:00 |
| 7 | Программирование интерфейса | 2026-06-18 12:23 → 2026-06-25 12:04 (+7d) | 2026-06-29 17:23 → 2026-07-03 12:04 (+4d) | 1.5w → 1.2w |  |  | resources Программист №3; Программист №4; Программист №1; Программист №2 → Программист №3; Программист №4; Программист №1; Программист №2; Программист-стажер; baseline start none → 2026-06-18 12:23; baseline finish none → 2026-06-29 17:23 |
| 8 | **Построение базы объектов** | 2026-03-24 12:00 A → 2026-03-30 09:00 A (+6d) | 2026-07-17 18:00 → 2026-07-30 12:00 (+13d) | 80.25d → 85d | 45% → 39% | 8.8d → 0.85d | resources Сервер; Партнерские сервисные услуги [0.1%] → Сервер; Партнерские сервисные услоги; baseline start none → 2026-03-24 12:00; baseline finish none → 2026-07-17 18:00 |
| 9 | Анализ и построение структуры базы объектов | 2026-03-24 12:00 A → 2026-03-30 09:00 A (+6d) | 2026-04-07 15:00 A → 2026-04-13 11:00 A (+6d) |  |  |  | baseline start none → 2026-03-24 12:00; baseline finish none → 2026-04-07 15:00 |
| 10 | Программирование средств обработки базы объектов | 2026-04-07 15:00 A → 2026-04-13 11:00 A (+6d) | 2026-04-21 15:00 A → 2026-05-05 10:00 A (+14d) | 2w → 3.15w |  |  | resources Программист №3; Программист №4; Программист №2 → Программист №3; Программист №4; Программист №2; Программист-стажер [50%]; baseline start none → 2026-04-07 15:00; baseline finish none → 2026-04-21 15:00 |
| 11 | Наполнение базы объектов | 2026-04-21 15:00 A → 2026-05-05 10:00 A (+14d) | 2026-07-17 18:00 → 2026-07-30 12:00 (+13d) |  | 27% → 13% | 8.8d → 0.85d | baseline start none → 2026-04-21 15:00; baseline finish none → 2026-07-17 18:00 |
| 12 | **Создание ядра GIS** |  | 2026-06-18 12:23 → 2026-06-25 12:04 (+7d) | 74.05d → 79.01d | 71% → 65% |  | baseline start none → 2026-03-02 09:00; baseline finish none → 2026-06-18 12:23 |
| 13 | Анализ и проектирование ядра |  |  |  |  |  | baseline start none → 2026-03-02 09:00; baseline finish none → 2026-03-24 12:00 |
| 14 | Создание модели ядра | 2026-03-24 12:00 A → 2026-03-30 09:00 A (+6d) | 2026-04-29 09:00 → 2026-05-19 10:00 (+20d) | 5.13w → 6.72w | 99% → 97% |  | resources Ведущий программист; Программист №1 → Ведущий программист; Программист №1; Программист-стажер; baseline start none → 2026-03-24 12:00; baseline finish none → 2026-04-29 09:00 |
| 15 | Тестирование модели ядра | 2026-04-29 09:00 A → 2026-05-19 10:00 (+20d) | 2026-05-04 15:00 A → 2026-05-22 11:00 (+18d) | 0.5w → 0.62w | 100% → 0% | none → 0d | baseline start none → 2026-04-29 09:00; baseline finish none → 2026-05-04 15:00 |
| 16 | Создание рабочей версии ядра | 2026-05-04 15:00 A → 2026-05-22 11:00 (+18d) | 2026-06-18 12:23 → 2026-06-25 12:04 (+7d) | 6.11w → 4.6w | 27% → 0% |  | resources Ведущий программист; Программист №1; Программист №2; Программист №3; Программист №4 → Ведущий программист; Программист №1; Программист №2; Программист №3; Программист №4; Программист-стажер; baseline start none → 2026-05-04 15:00; baseline finish none → 2026-06-18 12:23 |
| 17 | Создание мультимедиа - наполнения | 2026-04-07 15:00 A → 2026-04-10 16:00 A (+3d) | 2026-05-22 16:00 → 2026-05-27 16:00 (+5d) |  | 70% → 75% | 47.93d → 45.35d | baseline start none → 2026-04-07 15:00; baseline finish none → 2026-05-22 16:00 |
| 18 | Создание справочной системы | 2026-07-09 11:23 → 2026-07-14 16:04 (+5d) | 2026-07-23 14:23 → 2026-07-29 09:04 (+6d) |  |  | 5.26d → 2.22d | baseline start none → 2026-07-09 11:23; baseline finish none → 2026-07-23 14:23 |
| 19 | **Создание руководства пользователя** | 2026-06-15 17:23 → 2026-06-19 12:04 (+4d) | 2026-07-09 11:23 → 2026-07-14 16:04 (+5d) |  |  |  | baseline start none → 2026-06-15 17:23; baseline finish none → 2026-07-09 11:23 |
| 20 | Разработка дизайна руководства | 2026-06-15 17:23 → 2026-06-19 12:04 (+4d) | 2026-06-23 09:23 → 2026-06-26 14:04 (+3d) |  |  |  | baseline start none → 2026-06-15 17:23; baseline finish none → 2026-06-23 09:23 |
| 21 | Написание руководства пользователя | 2026-06-17 17:23 → 2026-06-23 12:04 (+6d) | 2026-07-09 11:23 → 2026-07-14 16:04 (+5d) |  |  |  | baseline start none → 2026-06-17 17:23; baseline finish none → 2026-07-09 11:23 |
| 22 | **Создание web - сайта и поддержка** | 2026-06-17 17:23 → 2026-06-23 12:04 (+6d) | 2026-07-21 14:23 → 2026-07-27 09:04 (+6d) |  |  |  | baseline start none → 2026-06-17 17:23; baseline finish none → 2026-07-21 14:23 |
| 23 | Разработка структуры сайта | 2026-06-17 17:23 → 2026-06-23 12:04 (+6d) | 2026-06-18 17:23 → 2026-06-24 12:04 (+6d) |  |  |  | baseline start none → 2026-06-17 17:23; baseline finish none → 2026-06-18 17:23 |
| 24 | Разработка дизайна сайта | 2026-06-18 17:23 → 2026-06-24 12:04 (+6d) | 2026-06-30 10:23 → 2026-07-03 15:04 (+3d) | 1.43w → 1.45w |  |  | baseline start none → 2026-06-18 17:23; baseline finish none → 2026-06-30 10:23 |
| 25 | Наполнение сайта | 2026-06-30 10:23 → 2026-07-03 15:04 (+3d) | 2026-07-21 14:23 → 2026-07-27 09:04 (+6d) |  |  |  | baseline start none → 2026-06-30 10:23; baseline finish none → 2026-07-21 14:23 |
| 26 | Тестирование сайта | 2026-07-14 14:23 → 2026-07-20 09:04 (+6d) | 2026-07-30 16:26 → 2026-07-31 10:48 (+1d) | 2.45w → 1.84w |  |  | resources Ведущий программист; Программист №1; Программист №2; Программист №3; Программист №4 → Ведущий программист; Программист №1; Программист №2; Программист №3; Программист №4; Программист-стажер; baseline start none → 2026-07-14 14:23; baseline finish none → 2026-07-30 16:26 |
| 27 | Сдача сайта в эксплуатацию | 2026-07-30 16:26 → 2026-07-31 10:48 (+1d) | 2026-07-30 16:26 → 2026-07-31 10:48 (+1d) |  |  |  | baseline start none → 2026-07-30 16:26; baseline finish none → 2026-07-30 16:26 |
| 28 | **Совещание** |  |  |  |  | 1.68d → 2.1d | baseline start none → 2026-03-04 09:00; baseline finish none → 2026-07-29 10:00 |
| 29 | Совещание 1 |  |  |  |  |  | baseline start none → 2026-03-04 09:00; baseline finish none → 2026-03-04 10:00 |
| 30 | Совещание 2 |  |  |  |  |  | baseline start none → 2026-03-11 09:00; baseline finish none → 2026-03-11 10:00 |
| 31 | Совещание 3 |  |  |  |  |  | baseline start none → 2026-03-18 09:00; baseline finish none → 2026-03-18 10:00 |
| 32 | Совещание 4 |  |  |  |  |  | baseline start none → 2026-03-25 09:00; baseline finish none → 2026-03-25 10:00 |
| 33 | Совещание 5 |  |  |  |  |  | baseline start none → 2026-04-01 09:00; baseline finish none → 2026-04-01 10:00 |
| 34 | Совещание 6 |  |  |  |  |  | baseline start none → 2026-04-08 09:00; baseline finish none → 2026-04-08 10:00 |
| 35 | Совещание 7 |  |  |  |  |  | baseline start none → 2026-04-15 09:00; baseline finish none → 2026-04-15 10:00 |
| 36 | Совещание 8 |  |  |  |  |  | baseline start none → 2026-04-22 09:00; baseline finish none → 2026-04-22 10:00 |
| 37 | Совещание 9 |  |  |  |  |  | baseline start none → 2026-04-29 09:00; baseline finish none → 2026-04-29 10:00 |
| 38 | Совещание 10 |  |  |  |  |  | baseline start none → 2026-05-06 09:00; baseline finish none → 2026-05-06 10:00 |
| 39 | Совещание 11 |  |  |  |  |  | baseline start none → 2026-05-13 09:00; baseline finish none → 2026-05-13 10:00 |
| 40 | Совещание 12 |  |  |  |  | 50.55d → 50.98d | baseline start none → 2026-05-20 09:00; baseline finish none → 2026-05-20 10:00 |
| 41 | Совещание 13 |  |  |  |  | 45.55d → 45.98d | baseline start none → 2026-05-27 09:00; baseline finish none → 2026-05-27 10:00 |
| 42 | Совещание 14 |  |  |  |  | 40.55d → 40.98d | baseline start none → 2026-06-03 09:00; baseline finish none → 2026-06-03 10:00 |
| 43 | Совещание 15 |  |  |  |  | 35.55d → 35.98d | baseline start none → 2026-06-10 09:00; baseline finish none → 2026-06-10 10:00 |
| 44 | Совещание 16 |  |  |  |  | 31.68d → 32.1d | baseline start none → 2026-06-17 09:00; baseline finish none → 2026-06-17 10:00 |
| 45 | Совещание 17 |  |  |  |  | 26.68d → 27.1d | baseline start none → 2026-06-24 09:00; baseline finish none → 2026-06-24 10:00 |
| 46 | Совещание 18 |  |  |  |  | 21.68d → 22.1d | baseline start none → 2026-07-01 09:00; baseline finish none → 2026-07-01 10:00 |
| 47 | Совещание 19 |  |  |  |  | 16.68d → 17.1d | baseline start none → 2026-07-08 09:00; baseline finish none → 2026-07-08 10:00 |
| 48 | Совещание 20 |  |  |  |  | 11.68d → 12.1d | baseline start none → 2026-07-15 09:00; baseline finish none → 2026-07-15 10:00 |
| 49 | Совещание 21 |  |  |  |  | 6.68d → 7.1d | baseline start none → 2026-07-22 09:00; baseline finish none → 2026-07-22 10:00 |
| 50 | Совещание 22 |  |  |  |  | 1.68d → 2.1d | baseline start none → 2026-07-29 09:00; baseline finish none → 2026-07-29 10:00 |
